# New OSG PKI Project

Schedule from MS Project, 2012-03-12 to 2014-01-27, A marks actual dates.
FNAL

## Calendars

- Standard: Mon-Fri 08:00-12:00, 13:00-17:00; Sat-Sun off. Exceptions (off unless hours are given): 2012-11-21 to 2012-11-23 (Thanksgiving), 2012-12-24 to 2013-01-01 (Christmas Holiday).

## Resources

| Resource |
| --- |
| Welch |
| Basney |
| Altunay |
| Fischer |
| Sehgal |
| Padmanabhan |

## Schedule

| ID | WBS | Task | Duration | Start | Finish | Predecessors | Complete | Remaining | Total slack | Free slack | Constraint | InCharge |
| --- | --- | --- | --- | --- | --- | --- | --- | --- | --- | --- | --- | --- |
| 1 | 1 | **Planning Phase** | 50d | 2012-03-12 A | 2012-05-18 |  | 99% | 0.62d | 55.5d | 0d |  | Welch |
| 2 | 1.1 | Development and Deployment Plan | 30d | 2012-03-12 A | 2012-04-20 A |  | 100% |  |  |  |  | Hayashi, Fischer |
| 3 | 1.2 | Document Acceptance Test Plan | 15d | 2012-04-23 A | 2012-05-11 A | 2 | 100% |  |  |  |  | Welch, Roy |
| 4 | 1.3 | Document Transition Plan | 15d | 2012-04-23 A | 2012-05-11 A | 2 | 100% |  |  |  |  | Welch, Pordes |
| 5 | 1.4 | Document Communications Plan | 10d | 2012-04-23 A | 2012-05-04 A | 2 | 100% |  |  |  |  | Pordes |
| 6 | 1.5 | Document Training Plan | 10d | 2012-04-23 A | 2012-05-04 A | 2 | 100% |  |  |  |  | Altunay |
| 7 | 1.6 | Define Contingency Plan (for the event that the DigiCert CA becomes unavailable) | 15d | 2012-04-23 A | 2012-05-11 | 2 | 90% | 1.5d | 60.5d |  |  | Altunay |
| 8 | 1.7 | Baseline WBS and Timeline | 5d | 2012-05-14 A | 2012-05-18 A | 6, 2, 3, 4, 5, 7 | 100% |  |  |  |  | Sehgal |
| 9 | 1.8 | Finalize & Sign Contract between DigiCert & Indiana | 20d | 2012-04-23 A | 2012-05-18 A | 2 | 100% |  |  |  |  | Welch |
| 10 | 2 | **Development Phase** | 80d | 2012-05-21 A | 2012-09-07 |  | 73% | 21.68d | 7d | 0d |  | Welch |
| 11 | 2.1 | **Develop the OSG CA web service front-end and integrate with the DigiCert CA** | 65d | 2012-05-21 A | 2012-08-17 |  | 82% | 11.5d | 2d | 0d |  | Hayashi |
| 12 | 2.1.1 | Develop front-end software and associated documentation | 30d | 2012-05-21 A | 2012-06-29 | 1 | 90% | 3d | 28.5d | 0d |  | Hayashi |
| 13 | 2.1.2 | Develop and package new CLI scripts | 10d | 2012-07-02 A | 2012-07-13 | 12 | 80% | 2d | 20.5d | 0d |  | Fischer, Mathuri |
| 14 | 2.1.3 | Review by the OSG software area of the resulting code and support documentation. | 10d | 2012-07-16 A | 2012-07-27 | 12, 13 | 50% | 5d | 15.5d | 0d |  | Roy |
| 15 | 2.1.4 | Developer Testing of New Solutions | 15d | 2012-07-30 A | 2012-08-17 | 14 | 90% | 1.5d | 2d |  |  | Hayashi, TBD |
| 16 | 2.2 | Define changes to operational procedures, policy and other changes defined in the Planning phase. | 15d | 2012-05-21 A | 2012-06-08 | 1 | 75% | 3.75d | 72d |  |  | Quick |
| 17 | 2.3 | Conduct Acceptance Testing of System | 15d | 2012-08-20 A | 2012-09-07 | 11 | 80% | 3d | 7d | 0d |  | Hayashi, Deximo, TBD, Roy |
| 18 | 2.4 | Update Transition Plan | 3d | 2012-08-20 | 2012-08-22 | 11 |  |  | 19d |  |  | Welch |
| 19 | 2.5 | Understand and document impact of DN changes | 15d | 2012-08-20 A | 2012-09-07 | 11 | 67% | 5d | 7d |  |  | Basney |
| 20 | 2.6 | Update Training Plan | 3d | 2012-08-20 | 2012-08-22 | 11 |  |  | 2d | 0d |  | Altunay |
| 21 | 2.7 | Update Communications Plan | 3d | 2012-08-20 | 2012-08-22 | 11 |  |  | 19d |  |  | Pordes |
| 22 | 3 | **Deployment Phase** | 55d | 2012-07-16 A | 2012-09-28 |  | 12% | 48.3d | 0d |  |  | Welch |
| 23 | 3.1 | **Deploy the OSG CA - the OSG web front-end and operations components** | 55d | 2012-07-16 A | 2012-09-28 |  | 21% | 43.21d | 0d |  |  | Hayashi |
| 24 | 3.1.1 | Procure Hardware for redunduncy | 15d | 2012-07-16 | 2012-08-03 | 13 |  |  | 27.5d | 0d |  | Quick |
| 25 | 3.1.2 | New Server Setup for redundancy | 5d | 2012-08-06 | 2012-08-10 | 24 |  |  | 27.5d | 20d |  | Quick |
| 26 | 3.1.3 | Install Software | 5d | 2012-09-10 A | 2012-09-14 | 17, 25 | 50% | 2.5d | 5d | 0d |  | Hayashi |
| 27 | 3.1.4 | Friendly User Testing | 10d | 2012-09-17 A | 2012-09-28 | 26 | 50% | 5d | 0d |  |  | Hayashi, Welch, Deximo, TBD |
| 28 | 3.2 | Develop and deploy training for OSG Staff | 25d | 2012-08-23 | 2012-09-26 | 20 |  |  | 2d |  |  | Altunay |
| 29 | 3.3 | Implement changes to operational procedures, policy and other changes defined in the Planning phase. | 10d | 2012-09-10 A | 2012-09-21 | 10 | 20% | 8d | 5d |  |  | Deximo |
| 30 | 3.4 | Transfer new software packages ownership to OSG Software team | 5d | 2012-09-10 | 2012-09-14 | 10 |  |  | 10d |  |  | Hayashi, Roy |
| 31 | 3.5 | Gate Report for completion of Development/Deployment phase | 3d | 2012-09-26 | 2012-09-28 |  |  |  | 0d |  | start no earlier than 2012-09-26 | Welch, Sehgal |

| ID | WBS | Task | Duration | Start | Finish | Predecessors | Total slack | InCharge |
| --- | --- | --- | --- | --- | --- | --- | --- | --- |
| 32 | 4 | **Transition** | 75d | 2012-10-01 | 2013-01-25 |  | 0d | Welch |
| 33 | 4.1 | Complete Execution of Communications Plan | 4d | 2012-10-01 | 2012-10-04 | 22 | 71d | Pordes |
| 34 | 4.2 | Execute Training Plan for User Community | 20d | 2012-10-01 | 2012-10-26 | 22 | 55d | Altunay |
| 35 | 4.3 | Issue DigiCerts certs for "friendly" user community | 5d | 2012-10-01 | 2012-10-05 | 22 | 0d | Hayashi, TBD |
| 36 | 4.4 | Regression test OSG functionality using new Certs | 50d | 2012-10-08 | 2012-12-19 | 35 | 0d | Altunay |
| 37 | 4.5 | Perform test Audits with DigiCert | 5d | 2012-10-08 | 2012-10-12 | 35 | 65d | Welch |
| 38 | 4.6 | Implement "early needed" contingency Plan elements for the event that the DigiCert CA becomes unavailable | 25d | 2012-10-08 | 2012-11-09 | 35 | 0d | Altunay |
| 39 | 4.7 | Test End-to-End Contingency Plan | 25d | 2012-11-12 | 2012-12-19 | 38 | 0d | Altunay, Deximo |
| 40 | 4.8 | Management Readiness Review | 20d | 2012-12-20 | 2013-01-25 | 36, 39 | 0d | Welch |
| 41 | 5 | **First Year of Operations** | 261d | 2013-01-28 | 2014-01-27 |  | 0d | Quick, Welch |
| 42 | 5.1 | Start issueing new and renewal certs from DigiCert | 1d | 2013-01-28 | 2013-01-28 | 32 | 260d | Hayashi, TBD |
| 43 | 5.2 | **"Drain" all active certs from DOEGrids CA** | 260d | 2013-01-28 | 2014-01-24 |  | 0d | Esnet |
| 44 | 5.2.1 | Stop issueing new certs from DOEGrids | 1d | 2013-01-28 | 2013-01-28 | 32 | 259d | Esnet |
| 45 | 5.2.2 | Continue issuing CRLs for DOEGrids Certs | 260d | 2013-01-28 | 2014-01-24 | 32 | 0d | Esnet |
| 46 | 5.3 | Shut off DEOGrid CA | 1d | 2014-01-27 | 2014-01-27 | 44, 45 | 0d | Esnet |
